# Metasepi Project

Schedule from Planner, 2014-05-12 to 2016-10-20.

## Calendars

- デフォルト: Mon-Fri 08:00-12:00, 13:00-17:00; Sat-Sun off.

## Schedule

| ID | WBS | Task | Type | Duration | Start | Finish | Predecessors | Constraint | Work |
| --- | --- | --- | --- | --- | --- | --- | --- | --- | --- |
| 1 | 1 | **ATS demo on tiny CPU** |  |  | 2014-05-12 | 2014-05-26 |  |  | 88h |
| 2 | 1.1 | AVR support to ATS |  |  | 2014-05-12 | 2014-05-20 |  |  | 51h |
| 3 | 1.2 | ARM support to ATS |  |  | 2014-05-20 | 2014-05-26 | 2 |  | 37h |
| 4 | 2 | **Translate ATS doc** |  |  | 2014-05-12 | 2015-03-18 |  |  | 1784h |
| 5 | 2.1 | ATS2TUTORIAL |  |  | 2014-05-12 | 2014-05-26 |  |  | 88h |
| 6 | 2.2 | INT2PROGINATS |  |  | 2014-05-27 | 2014-06-20 | 5 |  | 152h |
| 7 | 2.3 | ATS Paper |  |  | 2014-06-23 | 2014-08-12 | 6 |  | 291.5h |
| 8 | 2.4 | Wiki |  |  | 2014-08-12 | 2014-09-23 | 7 |  | 240h |
| 9 | 2.5 | BLUISH CODER |  |  | 2014-09-23 | 2015-02-03 | 8 |  | 760.5h |
| 10 | 2.6 | DML Paper |  |  | 2015-02-03 | 2015-03-18 | 9 |  | 252h |
| 11 | 3 | **Translate Metasepi blog** |  |  | 2014-05-27 | 2014-08-22 | 5 |  | 512h |
| 12 | 3.1 | Translate past entries |  |  | 2014-05-27 | 2014-08-22 |  |  | 512h |
| 13 | 4 | OSC@Nagoya | milestone | 0d | 2014-07-04 | 2014-07-04 |  | must start on 2014-07-04 |  |
| 14 | 5 | OSC@Kansai | milestone | 0d | 2014-08-01 | 2014-08-01 |  | must start on 2014-08-01 |  |
| 15 | 6 | Haskell Symposium | milestone | 0d | 2014-09-04 | 2014-09-04 | 11 | must start on 2014-09-04 |  |
| 16 | 7 | OSC@Tokyo | milestone | 0d | 2014-10-20 | 2014-10-18 |  | must start on 2014-10-18 |  |
| 17 | 8 | **Lifegame on FSM-55** |  |  | 2014-10-20 | 2015-01-28 | 16 |  | 577.5h |
| 18 | 8.1 | Setup gdbserver |  |  | 2014-10-20 | 2014-11-07 |  |  | 120h |
| 19 | 8.2 | Snatch FSM-55 |  |  | 2014-11-10 | 2014-12-31 | 18 |  | 297.5h |
| 20 | 8.3 | Lifegame on FSM-55 |  |  | 2014-12-31 | 2015-01-28 | 19 |  | 160h |
| 21 | 9 | Submit demo to PPL 2015 | milestone | 0d | 2015-02-09 | 2015-02-08 | 20 | must start on 2015-02-08 |  |
| 22 | 10 | **FSM-55 from PCB** |  |  | 2014-10-20 | 2014-12-30 | 16 |  | 416h |
| 23 | 10.1 | Prepare the parts |  |  | 2014-10-20 | 2014-11-25 |  |  | 216h |
| 24 | 10.2 | Understand reflow |  |  | 2014-11-26 | 2014-12-09 | 23 |  | 80h |
| 25 | 10.3 | Make some boards |  |  | 2014-12-10 | 2014-12-23 | 24 |  | 80h |
| 26 | 10.4 | Schedule fpiot meetup |  |  | 2014-12-24 | 2014-12-30 | 25 |  | 40h |

| ID | WBS | Task | Type | Duration | Start | Finish | Predecessors | Constraint | Work |
| --- | --- | --- | --- | --- | --- | --- | --- | --- | --- |
| 27 | 11 | **1wire protocol** |  |  | 2015-01-28 | 2015-06-03 | 22, 17 |  | 720h |
| 28 | 11.1 | Hardware design |  |  | 2015-01-28 | 2015-03-11 |  |  | 240h |
| 29 | 11.2 | Single network |  |  | 2015-03-11 | 2015-04-22 | 28 |  | 240h |
| 30 | 11.3 | Sequence network |  |  | 2015-04-22 | 2015-06-03 | 29 |  | 240h |
| 31 | 12 | Demo at PPL 2015 | milestone | 0d | 2015-03-04 | 2015-03-04 |  | must start on 2015-03-04 |  |
| 32 | 13 | **Square network** |  |  | 2015-06-03 | 2015-10-08 | 27 |  | 728h |
| 33 | 13.1 | Hardware design |  |  | 2015-06-03 | 2015-07-15 |  |  | 240h |
| 34 | 13.2 | Single network |  |  | 2015-07-15 | 2015-08-26 | 33 |  | 240h |
| 35 | 13.3 | Network simulator |  |  | 2015-08-26 | 2015-10-07 | 34 |  | 240h |
| 36 | 13.4 | Multiple network |  |  | 2015-10-07 | 2015-10-08 | 35 |  | 8h |
| 37 | 14 | **プログラミングの基礎 on ATS** |  |  | 2015-10-08 | 2016-10-20 | 32 |  | 2160h |
| 38 | 14.1 | In Japanese |  |  | 2015-10-08 | 2016-02-11 |  |  | 720h |
| 39 | 14.2 | In English |  |  | 2016-02-11 | 2016-10-20 | 38 |  | 1440h |
| 40 | 15 | **Setup to snatch Linux** |  |  | 2015-10-08 | 2015-12-22 | 32 |  | 424h |
| 41 | 15.1 | Setup raspberrypi |  |  | 2015-10-08 | 2015-11-24 |  |  | 264h |
| 42 | 15.2 | Setup ATS config |  |  | 2015-11-24 | 2015-12-08 | 41 |  | 80h |
| 43 | 15.3 | Choose snatch target |  |  | 2015-12-08 | 2015-12-22 | 42 |  | 80h |
| 44 | 16 | **Web framework** |  |  | 2015-12-22 | 2016-03-01 | 40 |  | 400h |
| 45 | 16.1 | On POSIX |  |  | 2015-12-22 | 2016-01-12 |  |  | 120h |
| 46 | 16.2 | On Arduino |  |  | 2016-01-12 | 2016-02-02 | 45 |  | 120h |
| 47 | 16.3 | Wiki application |  |  | 2016-02-02 | 2016-03-01 | 46 |  | 160h |
| 48 | 17 | **ATS package manager** |  |  | 2016-03-01 | 2016-03-31 | 44 |  | 176h |
| 49 | 17.1 | Understand opam design |  |  | 2016-03-01 | 2016-03-22 |  |  | 120h |
| 50 | 17.2 | Get design for ATS |  |  | 2016-03-22 | 2016-03-31 | 49 |  | 56h |
| 51 | 18 | Parsec on ATS |  |  | 2016-03-31 | 2016-04-28 | 48 |  | 160h |
